# Anteproyecto_UVA_Gerencia

Schedule from MS Project, 2050-01-10 to 2050-06-17, status date 2050-02-10, costs in $, A marks actual dates.

## Calendars

- Anteproyecto UVA: Mon-Fri 08:00-12:00, 14:00-18:00; Sat-Sun off. Exceptions (off unless hours are given): 2050-01-10 (Festivo 2), 2050-03-21 (Festivo 3), 2050-04-07 to 2050-04-08 (Festivo 4), 2050-05-23 (Festivo 5), 2050-06-13 (Festivo 6).

## Resources

| Resource | Rate |
| --- | --- |
| Sociólogo | 9000 |
| Antropólogo | 10000 |
| Arquitecto | 11250 |
| Ingeniero civil | 11900 |
| Paisajista | 14000 |
| Diseñador gráfico | 7500 |
| Administrador 1 | 8800 |
| Administrador 2 | 8800 |
| Coordinador alcaldía | 16300 |
| Funcionario alcaldía | 8900 |
| Funcionario gobernación | 12500 |
| Formador 1 | 9400 |
| Formador 2 | 9400 |
| Psicólogo 1 | 10000 |
| Psicólogo 2 | 10000 |
| Licencia programas de arquitectura | 600000 |
| Contador | 10000 |
| Licencia de programas de diseño | 480000 |
| Kit de materiales didácticos para trabajo colaborativo sesión 1 | 400000 |
| Kit de Materiales didácticos para trabajo colaborativo sesión 4 | 340000 |
| Kit de Materiales didácticos para trabajo colaborativo sesión 7 | 630000 |
| Gerente de Proyecto Construcción | 11500 |
| Contratista general | 9400 |

## Schedule

| ID | WBS | Task | Type | Duration | Start | Finish | Predecessors | Complete | Remaining | Baseline start | Baseline finish | Baseline duration | Total slack | Free slack | Constraint | Resources | Work | Actual work | Cost | Baseline cost | Actual cost | Segumiento de la duración | Text4 | Seguimiento del IRC |
| --- | --- | --- | --- | --- | --- | --- | --- | --- | --- | --- | --- | --- | --- | --- | --- | --- | --- | --- | --- | --- | --- | --- | --- | --- |
| 1 | 1 | **Anteproyecto** |  | 109d | 2050-01-10 A | 2050-06-17 |  | 31% | 75.36d | 2050-01-10 | 2050-05-26 | 94d | 0d |  |  |  | 5072h | 1168h | 54,708,400 | 51,652,800 | 11,570,000 |  |  |  |
| 2 | 1.1 | Inicio del proyecto | milestone, manual | 0d | 2050-01-10 A | 2050-01-10 A |  | 100% |  | 2050-01-10 | 2050-01-10 | 0d |  |  |  |  |  |  |  |  |  | BIEN | 100 |  |
| 3 | 1.2 | Reunión formal para la apertura del proyecto |  | 3d | 2050-01-15 A | 2050-01-19 A | 2 | 100% |  | 2050-01-11 | 2050-01-12 | 2d |  |  |  | Sociólogo; Antropólogo; Arquitecto; Ingeniero civil; Paisajista; Diseñador gráfico; Funcionario gobernación; Formador 1; Formador 2; Psicólogo 1 | 240h | 240h | 2,518,800 | 1,679,200 | 2,518,800 | MAL | 100 | 0,67 |
| 4 | 1.3 | **Creación del comité participación ciudadana** |  | 12d | 2050-01-20 A | 2050-02-04 A |  | 100% |  | 2050-01-13 | 2050-01-28 | 12d |  |  |  |  | 128h | 128h | 1,651,200 | 1,651,200 | 1,651,200 |  |  |  |
| 5 | 1.3.1 | Campaña para promover las elecciones al comité |  | 8d | 2050-01-20 A | 2050-01-31 A | 3 | 100% |  | 2050-01-13 | 2050-01-24 | 8d |  |  | finish no earlier than 2050-01-14 | Coordinador alcaldía | 64h | 64h | 1,043,200 | 1,043,200 | 1,043,200 | BIEN | 100 |  |
| 6 | 1.3.2 | **Comité de participación** |  | 4d | 2050-02-01 A | 2050-02-04 A |  | 100% |  | 2050-01-25 | 2050-01-28 | 4d |  |  |  |  | 64h | 64h | 608,000 | 608,000 | 608,000 |  |  |  |
| 7 | 1.3.2.1 | Selección de integrantes y Organización de dotación |  | 4d | 2050-02-01 A | 2050-02-04 A | 5 | 100% |  | 2050-01-25 | 2050-01-28 | 4d |  |  | finish no earlier than 2050-01-20 | Sociólogo; Psicólogo 1 | 64h | 64h | 608,000 | 608,000 | 608,000 | BIEN | 100 |  |
| 8 | 1.4 | **Contratación de lideres para los frentes del proyecto** |  | 40d | 2050-01-20 A | 2050-03-16 |  | 75% | 10d | 2050-01-13 | 2050-02-23 | 30d | 0d |  |  |  | 960h | 720h | 8,864,000 | 6,648,000 | 6,648,000 |  |  |  |
| 9 | 1.4.1 | Selección de lideres |  | 30d | 2050-01-20 A | 2050-03-02 A | 5SS | 100% |  | 2050-01-13 | 2050-02-09 | 20d |  |  | finish no earlier than 2050-02-01 | Administrador 1; Funcionario alcaldía; Psicólogo 2 | 720h | 720h | 6,648,000 | 4,432,000 | 6,648,000 | MAL | 100 | 0,67 |
| 10 | 1.4.2 | Formalización de contratación de lideres |  | 10d | 2050-03-03 | 2050-03-16 | 9, 7 |  |  | 2050-02-10 | 2050-02-23 | 10d | 0d |  | finish no earlier than 2050-02-15 | Administrador 2; Funcionario alcaldía; Psicólogo 2 | 240h |  | 2,216,000 | 2,216,000 |  | BIEN |  |  |
| 11 | 1.5 | **4-Capacitación de lideres** |  | 10d | 2050-03-10 | 2050-03-24 |  |  |  | 2050-02-17 | 2050-03-02 | 10d | 5d |  |  |  | 520h |  | 5,702,000 | 5,702,000 |  |  |  |  |
| 12 | 1.5.1 | Capacitación de lideres del frente de ingeniería |  | 5d | 2050-03-17 | 2050-03-24 | 10 |  |  | 2050-02-24 | 2050-03-02 | 5d | 0d |  | start no earlier than 2050-02-24 | Arquitecto; Ingeniero civil; Paisajista; Formador 1 | 160h |  | 1,862,000 | 1,862,000 |  | BIEN |  |  |
| 13 | 1.5.2 | Capacitación de lideres social |  | 5d | 2050-03-17 | 2050-03-24 | 12SS |  |  | 2050-02-24 | 2050-03-02 | 5d | 0d |  | start no earlier than 2050-02-24 | Antropólogo; Sociólogo; Formador 2; Psicólogo 1 | 160h |  | 1,536,000 | 1,536,000 |  | BIEN |  |  |
| 14 | 1.5.3 | Capacitación de lideres administrativos |  | 5d | 2050-03-10 | 2050-03-17 | 13SF |  |  | 2050-02-17 | 2050-02-24 | 5d | 12d | 5d | start no earlier than 2050-02-17 | Contador; Antropólogo; Administrador 1; Coordinador alcaldía; Funcionario gobernación | 200h |  | 2,304,000 | 2,304,000 |  | BIEN |  |  |
| 15 | 1.6 | **5-Diseño colaborativo** |  | 45d | 2050-03-03 | 2050-05-09 |  |  |  | 2050-03-03 | 2050-04-18 | 30d | 22d |  |  |  | 1792h |  | 22,066,800 | 22,066,800 |  |  |  |  |
| 16 | 1.6.1 | **Reuniones de comité diseño** |  | 25d | 2050-03-03 | 2050-04-11 |  |  |  | 2050-03-03 | 2050-04-11 | 25d | 22d |  |  |  | 112h |  | 2,422,800 | 2,422,800 |  |  |  |  |
| 17 | 1.6.1.1 | Reuniones de comité diseño 1 |  | 1d | 2050-03-25 | 2050-03-25 | 7, 12, 13, 14 |  |  | 2050-03-03 | 2050-03-03 | 1d | 7d | 0d | start no earlier than 2050-03-03 | Formador 1; Formador 2; Kit de materiales didácticos para trabajo colaborativo sesión 1 | 16h |  | 550,400 | 550,400 |  | BIEN |  |  |
| 18 | 1.6.1.2 | Reuniones de comité diseño 2 |  | 1d | 2050-03-03 | 2050-03-03 |  |  |  | 2050-03-03 | 2050-03-03 | 1d | 71d |  | start no earlier than 2050-03-03 | Formador 1; Formador 2 | 16h |  | 150,400 | 150,400 |  | BIEN |  |  |
| 19 | 1.6.1.3 | Reuniones de comité diseño 3 |  | 1d | 2050-03-10 | 2050-03-10 |  |  |  | 2050-03-10 | 2050-03-10 | 1d | 66d |  | start no earlier than 2050-03-10 | Formador 1; Formador 2 | 16h |  | 150,400 | 150,400 |  | BIEN |  |  |
| 20 | 1.6.1.4 | Reuniones de comité diseño 4 |  | 1d | 2050-03-17 | 2050-03-17 |  |  |  | 2050-03-17 | 2050-03-17 | 1d | 61d |  | start no earlier than 2050-03-17 | Formador 1; Formador 2; Kit de Materiales didácticos para trabajo colaborativo sesión 4 | 16h |  | 490,400 | 490,400 |  | BIEN |  |  |
| 21 | 1.6.1.5 | Reuniones de comité diseño 5 |  | 1d | 2050-03-24 | 2050-03-24 |  |  |  | 2050-03-24 | 2050-03-24 | 1d | 57d |  | start no earlier than 2050-03-24 | Formador 1; Formador 2 | 16h |  | 150,400 | 150,400 |  | BIEN |  |  |
| 22 | 1.6.1.6 | Reuniones de comité diseño 6 |  | 1d | 2050-03-31 | 2050-03-31 |  |  |  | 2050-03-31 | 2050-03-31 | 1d | 52d |  | start no earlier than 2050-03-31 | Formador 1; Formador 2 | 16h |  | 150,400 | 150,400 |  | BIEN |  |  |
| 23 | 1.6.1.7 | Reuniones de comité diseño 7 |  | 1d | 2050-04-11 | 2050-04-11 |  |  |  | 2050-04-11 | 2050-04-11 | 1d | 47d |  | start no earlier than 2050-04-11 | Formador 1; Formador 2; Kit de Materiales didácticos para trabajo colaborativo sesión 7 | 16h |  | 780,400 | 780,400 |  | BIEN |  |  |
| 24 | 1.6.2 | Consolidación de ideas para el diseño final |  | 30d | 2050-03-25 | 2050-05-09 | 17SS |  |  | 2050-03-03 | 2050-04-18 | 30d | 7d |  |  | Administrador 2; Arquitecto; Funcionario alcaldía; Funcionario gobernación; Ingeniero civil; Licencia de programas de diseño; Licencia programas de arquitectura; Paisajista; Psicólogo 2 | 1680h |  | 19,644,000 | 19,644,000 |  | BIEN |  |  |

Notes:
- 1: -Cristian Del Castillo Garcia / -A00369953

| ID | WBS | Task | Type | Duration | Start | Finish | Predecessors | Complete | Remaining | Baseline start | Baseline finish | Baseline duration | Total slack | Resources | Work | Actual work | Cost | Baseline cost | Actual cost | Segumiento de la duración | Text4 |
| --- | --- | --- | --- | --- | --- | --- | --- | --- | --- | --- | --- | --- | --- | --- | --- | --- | --- | --- | --- | --- | --- |
| 25 | 1.7 | **6-Estudios de la comunidad** |  | 30d | 2050-04-05 | 2050-05-18 |  |  |  | 2050-03-14 | 2050-04-27 | 30d | 0d |  | 816h |  | 7,804,800 | 7,804,800 |  |  |  |
| 26 | 1.7.1 | Realizar encuestas a la comunidad |  | 18d | 2050-04-05 | 2050-05-02 | 13FS+7d |  |  | 2050-03-14 | 2050-04-11 | 18d | 0d | Antropólogo; Psicólogo 1; Sociólogo | 432h |  | 4,176,000 | 4,176,000 |  | BIEN |  |
| 27 | 1.7.2 | Análisis de resultados |  | 12d | 2050-05-03 | 2050-05-18 | 26, 24FF |  |  | 2050-04-12 | 2050-04-27 | 12d | 0d | Administrador 1; Antropólogo; Psicólogo 1; Sociólogo | 384h |  | 3,628,800 | 3,628,800 |  | BIEN |  |
| 28 | 1.8 | **7-Campañas de expectativa** |  | 17d | 2050-05-19 | 2050-06-14 |  |  |  | 2050-04-28 | 2050-05-20 | 17d | 0d |  | 304h |  | 2,833,600 | 2,833,600 |  |  |  |
| 29 | 1.8.1 | Estrategias de diseño |  | 4d | 2050-05-19 | 2050-05-25 | 27 |  |  | 2050-04-28 | 2050-05-03 | 4d | 0d | Administrador 2; Diseñador gráfico; Funcionario alcaldía; Funcionario gobernación | 128h |  | 1,206,400 | 1,206,400 |  | BIEN |  |
| 30 | 1.8.2 | Desarrollo de diseño |  | 10d | 2050-05-26 | 2050-06-08 | 29 |  |  | 2050-05-04 | 2050-05-17 | 10d | 0d | Diseñador gráfico | 80h |  | 600,000 | 600,000 |  | BIEN |  |
| 31 | 1.8.3 | Lanzamiento de la campaña |  | 3d | 2050-06-09 | 2050-06-14 | 30 |  |  | 2050-05-18 | 2050-05-20 | 3d | 0d | Administrador 1; Administrador 2; Coordinador alcaldía; Funcionario alcaldía | 96h |  | 1,027,200 | 1,027,200 |  | BIEN |  |
| 32 | 1.9 | **8-Seguimiento** |  | 105d | 2050-01-17 A | 2050-06-17 |  | 63% | 39.38d | 2050-01-11 | 2050-05-26 | 94d | 0d |  | 312h | 80h | 3,267,200 | 3,267,200 | 752,000 |  |  |
| 33 | 1.9.1 | Análisis presupestal |  | 5d | 2050-01-17 A | 2050-01-21 A | 3SS | 100% |  | 2050-01-11 | 2050-01-17 | 5d |  | Administrador 1; Contador | 80h | 80h | 752,000 | 752,000 | 752,000 | BIEN | 100 |
| 34 | 1.9.2 | Análisis de impacto |  | 2d | 2050-06-15 | 2050-06-16 | 31, 33 |  |  | 2050-05-24 | 2050-05-25 | 2d | 0d | Administrador 1; Administrador 2; Antropólogo; Arquitecto; Contador; Coordinador alcaldía; Formador 1; Formador 2; Funcionario alcaldía; Funcionario gobernación; Paisajista; Psicólogo 1; Sociólogo | 208h |  | 2,213,600 | 2,213,600 |  | BIEN |  |
| 35 | 1.9.3 | Reunión de seguimiento |  | 1d | 2050-06-17 | 2050-06-17 | 34 |  |  | 2050-05-26 | 2050-05-26 | 1d | 0d | Coordinador alcaldía; Funcionario alcaldía; Funcionario gobernación | 24h |  | 301,600 | 301,600 |  | BIEN |  |
| 36 | 1.10 | Fin Anteproyecto | milestone | 0d | 2050-06-17 | 2050-06-17 | 35 |  |  | 2050-05-26 | 2050-05-26 | 0d | 0d |  |  |  |  |  |  | BIEN |  |
